# Орига v_2

Schedule from MS Project, 2026-07-06 to 2026-12-17.

## Calendars

- Стандартный: Mon-Fri 09:00-13:00, 14:00-18:00; Sat-Sun off. Exceptions (off unless hours are given): 2026-10-03 09:00-13:00, 14:00-18:00.

## Resources

| Resource |
| --- |
| Жогина |
| Маммедова |
| Константинова |
| Точилов |
| Головина |
| Головина Яна |
| 10 сентября релиз |
| Комарова |
| Петухова |
| Писарева |
| Рассветова |
| САдовая |
| Тарасов |
| Лебедева |
| Константинова Марина |
| Писарева Любовь |
| Константинова М. |
| Жогина Екатерина |
| Рассветова Инга |
| По остальным МС также нет Паспорта |
| Мямлина Елена |
| Калинкин |
| Мерзликин |
| Успенский |
| Касенко |
| Шлогауэр |
| Потребность |
| Крымов |
| Потребность аналитик ЦКО |
| Потребность back ЦКО |
| Потребность front ЦКО |
| Потребность test ЦКО |
| Потребность дизайн |
| Потребность аналитика ЦКО |
| Юрасов |
| Роган |
| Потребность дизайн ЦКО |
| Судариков |
| САвлук |
| Колотыгин |
| Маммедова Вероника |

## Schedule

| ID | WBS | Task | Type | Duration | Start | Finish | Total slack | Constraint | Resources | Work | Text1 |
| --- | --- | --- | --- | --- | --- | --- | --- | --- | --- | --- | --- |
| 1 | 1 | Орига |  | 1d? | 2026-08-06 | 2026-08-06 | 40d |  |  |  |  |
| 2 | 2 | **Общее** |  | 52d? | 2026-07-20 | 2026-09-29 | 57d |  |  | 760h |  |
| 3 | 2.1 | **Дизайн продукта** |  | 1d? | 2026-08-06 | 2026-08-06 | 95d |  |  |  |  |
| 4 | 2.1.1 | Финальное согласование дизайна линейки |  | 1d? | 2026-08-06 | 2026-08-06 | 69d |  |  |  |  |
| 5 | 2.1.2 | Проведение предварительных расчетов для определения целевых логик |  | 1d? | 2026-08-06 | 2026-08-06 | 69d |  |  |  |  |
| 6 | 2.1.3 | Тестирование нейминга тарифов и опций |  | 1d? | 2026-08-06 | 2026-08-06 | 69d |  |  |  |  |
| 7 | 2.2 | **Ценообразование** |  | 1d? | 2026-08-06 | 2026-08-06 | 95d |  |  |  |  |
| 8 | 2.2.1 | Ценообразование тарифов и опций |  | 1d? | 2026-08-06 | 2026-08-06 | 69d |  |  |  |  |
| 9 | 2.2.2 | Подготовка бизнес-кейса |  | 1d? | 2026-08-06 | 2026-08-06 | 69d |  |  |  |  |
| 10 | 2.2.3 | Согласование кейса с БА |  | 1d? | 2026-08-06 | 2026-08-06 | 69d |  |  |  |  |
| 11 | 2.2.4 | Передача параметров в ИТ |  | 1d? | 2026-08-06 | 2026-08-06 | 69d |  |  |  |  |
| 12 | 2.3 | **Защита проекта** |  | 1d? | 2026-08-06 | 2026-08-06 | 95d |  |  |  |  |
| 13 | 2.3.1 | Подготовка материалов для ПК |  | 1d? | 2026-08-06 | 2026-08-06 | 69d |  |  |  |  |
| 14 | 2.3.2 | Согласование ПК с функциями |  | 1d? | 2026-08-06 | 2026-08-06 | 69d |  |  |  |  |
| 15 | 2.3.3 | Согласование ПК с СЕО-1 |  | 1d? | 2026-08-06 | 2026-08-06 | 69d |  |  |  |  |
| 16 | 2.4 | **Обновление онбординга** |  | 1d? | 2026-08-06 | 2026-08-06 | 95d |  |  |  |  |
| 17 | 2.4.1 | Обновление логики и текстов |  | 1d? | 2026-08-06 | 2026-08-06 | 69d |  |  |  |  |
| 18 | 2.4.2 | Настройка онбординга (в т.ч. Welcome program) |  | 1d? | 2026-08-06 | 2026-08-06 | 69d |  |  |  |  |
| 19 | 2.5 | **Бизнес (Дизайн+ТЗ)** |  | 7d? | 2026-08-06 | 2026-08-14 | 89d |  |  | 104h |  |
| 20 | 2.5.1 | БФТ ТП+МС | milestone | 0d | 2026-08-10 | 2026-08-10 | 68d | start no earlier than 2026-08-10 | Константинова Марина |  |  |
| 21 | 2.5.2 | БФТ Ева | milestone | 0d | 2026-08-10 | 2026-08-10 | 68d | start no earlier than 2026-08-10 | Константинова Марина |  |  |
| 22 | 2.5.3 | БФТ Консьерж |  | 6d | 2026-08-07 | 2026-08-14 | 63d | finish no earlier than 2026-08-14 | Константинова Марина | 48h | Ждем согласования доп. костов - блокер для БФТ |
| 23 | 2.5.4 | БФТ 5G |  | 1d? | 2026-08-06 | 2026-08-06 | 69d |  | Константинова Марина | 8h |  |
| 24 | 2.5.5 | БФТ MNP-in |  | 1d? | 2026-08-06 | 2026-08-06 | 69d |  | Константинова Марина | 8h | Точка входа бота на сайте |
| 25 | 2.5.6 | Паспорт требования Консьерж |  | 1d? | 2026-08-06 | 2026-08-06 | 69d |  | Константинова Марина | 8h | Заблокированы ФОТом для КС |
| 26 | 2.5.7 | Паспорт требования MNP-in |  | 1d? | 2026-08-06 | 2026-08-06 | 69d |  | Константинова Марина | 8h | конфигурация бота |
| 27 | 2.5.8 | Паспорт требования |  | 1d? | 2026-08-06 | 2026-08-06 | 69d |  | Константинова Марина | 8h | По остальным МС также нет Паспорта |
| 28 | 2.5.9 | Требования по ценам и объемам |  | 1d? | 2026-08-06 | 2026-08-06 | 69d |  | Константинова Марина | 8h |  |
| 29 | 2.5.10 | Паспорт для Заморозки цен |  | 1d? | 2026-08-06 | 2026-08-06 | 69d |  | Константинова Марина | 8h | нужна отдельная RFC |

| ID | WBS | Task | Duration | Start | Finish | Total slack | Free slack | Constraint | Resources | Work | Text1 |
| --- | --- | --- | --- | --- | --- | --- | --- | --- | --- | --- | --- |
| 30 | 2.6 | **CJ** | 7d? | 2026-08-06 | 2026-08-14 | 89d |  |  |  | 120h |  |
| 31 | 2.6.1 | CJ ТП+МС | 5d | 2026-08-06 | 2026-08-12 | 65d |  | finish no earlier than 2026-08-12 | Писарева Любовь | 40h | https://jira.megafon.ru/browse/CX-1875 |
| 32 | 2.6.2 | CJ Ева | 1d? | 2026-08-06 | 2026-08-06 | 69d |  | finish no earlier than 2026-08-06 | Писарева Любовь | 8h | https://jira.megafon.ru/browse/CX-3126 |
| 33 | 2.6.3 | CJ Консьерж | 4d? | 2026-08-11 | 2026-08-14 | 63d |  | start no earlier than 2026-08-11 | Писарева Любовь | 32h | https://jira.megafon.ru/browse/CX-3113 |
| 34 | 2.6.4 | CJ на заморозку цен | 5d | 2026-08-10 | 2026-08-14 | 63d |  | finish no earlier than 2026-08-14 | Писарева Любовь | 40h |  |
| 35 | 2.7 | **ШПК** | 20d? | 2026-07-20 | 2026-08-14 | 84d | 0d |  |  | 216h |  |
| 36 | 2.7.1 | ШПК ТП+МС | 16d? | 2026-07-20 | 2026-08-10 | 62d |  | start no earlier than 2026-07-20 | Петухова | 128h | https://jira.megafon.ru/browse/CX-1876 |
| 37 | 2.7.2 | ШПК Ева | 10d | 2026-08-03 | 2026-08-14 | 58d |  | finish no earlier than 2026-08-14 | Лебедева | 80h | https://jira.megafon.ru/browse/CX-3127 |
| 38 | 2.7.3 | ШПК Консьерж | 1d? | 2026-08-06 | 2026-08-06 | 64d |  | finish no earlier than 2026-08-06 | Петухова | 8h | https://jira.megafon.ru/browse/CX-3114 |
| 39 | 2.8 | **КС** | 39d? | 2026-08-06 | 2026-09-29 | 57d |  |  | Комарова | 312h |  |
| 40 | 2.8.1 | Подготовка скриптов обслуживания | 1d? | 2026-08-06 | 2026-08-06 | 69d |  |  |  |  |  |
| 41 | 2.8.2 | Обновление материалов (инструкции, новости) на СПОК | 1d? | 2026-08-06 | 2026-08-06 | 69d |  |  |  |  |  |
| 42 | 2.8.3 | КС ТП+МС | 39d? | 2026-08-06 | 2026-09-29 | 31d |  | start no earlier than 2026-08-06 |  |  |  |
| 43 | 2.8.4 | КС Ева | 39d? | 2026-08-06 | 2026-09-29 | 31d |  | start no earlier than 2026-08-06 |  |  | https://jira.megafon.ru/browse/SSMF-159019 |
| 44 | 2.8.5 | КС Консьерж | 39d? | 2026-08-06 | 2026-09-29 | 31d |  | start no earlier than 2026-08-06 |  |  | https://jira.megafon.ru/browse/SSMF-158963 |
| 45 | 2.9 | Интернет-магазин | 1d? | 2026-08-06 | 2026-08-06 | 95d |  |  | Мямлина Елена | 8h |  |
| 46 | 2.10 | **Информирование** | 1d? | 2026-08-06 | 2026-08-06 | 95d |  |  |  |  |  |
| 47 | 2.10.1 | Рассылка на ПП за 10 дней | 1d? | 2026-08-06 | 2026-08-06 | 69d |  |  |  |  |  |
| 48 | 2.10.2 | Рассылка на ПП за 3 дня | 1d? | 2026-08-06 | 2026-08-06 | 69d |  |  |  |  |  |
| 49 | 2.10.3 | Рассылка на ПП за 1 день | 1d? | 2026-08-06 | 2026-08-06 | 69d |  |  |  |  |  |
| 50 | 2.11 | **Мониторинг** | 1d? | 2026-08-06 | 2026-08-06 | 95d |  |  |  |  |  |
| 51 | 2.11.1 | Настройка мониторинга | 1d? | 2026-08-06 | 2026-08-06 | 69d |  |  |  |  |  |
| 52 | 2.11.2 | Мониторинг | 1d? | 2026-08-06 | 2026-08-06 | 69d |  |  |  |  |  |
| 53 | 3 | **Тарифный план** | 119d? | 2026-07-06 | 2026-12-16 | 0d |  |  |  | 4664h |  |
| 54 | 3.1 | **Бизнес** | 2d? | 2026-09-03 | 2026-09-04 |  |  |  |  | 16h |  |
| 55 | 3.1.1 | Параметры ТП (Объемы и АП) | 2d? | 2026-09-03 | 2026-09-04 | 73d | 0d | start no earlier than 2026-09-03 | Константинова Марина | 16h |  |

Notes:
- 31: Text2: появилась 2-ая CJ - не учитывать, CJ готов
- 34: Text2: нужна ли заморозка на Главной?
- 36: Text2: анализ закрытие 10.08
- 37: Text2: ждет согласования от автора
- 38: Text2: нет описания
- 42: Text2: 4 нед с момента запуска
- 43: Text2: СПОК, скрипты, логика бота
- 44: Text2: СПОК, скрипты, логика бота
- 45: Text2: ТЗ есть в общем ТЗ, ждем оценку от Мямлиной Елены, нужно сбиться, т.к. нужна корзина, карточка тарифа и т.д.
- 55: Text2: 4 сентября - дедлайн

| ID | WBS | Task | Duration | Start | Finish | Predecessors | Total slack | Free slack | Constraint | Resources | Work | Text1 |
| --- | --- | --- | --- | --- | --- | --- | --- | --- | --- | --- | --- | --- |
| 56 | 3.2 | **ЦКО** | 75d? | 2026-08-03 | 2026-11-12 |  | 24d |  |  | Жогина Екатерина | 4240h |  |
| 57 | 3.2.1 | **Новая карточка тарифа (cайт, мнп, есим)** | 25d? | 2026-08-03 | 2026-09-04 |  | 74d |  |  | Жогина Екатерина | 616h |  |
| 58 | 3.2.1.1 | ЦКО дизайн | 7d? | 2026-08-03 | 2026-08-11 |  | 92d |  | finish no earlier than 2026-08-11 | Калинкин | 56h |  |
| 59 | 3.2.1.2 | ЦКО аналитика | 3d? | 2026-08-12 | 2026-08-14 |  | 89d |  | finish no earlier than 2026-08-14 | Мерзликин | 24h |  |
| 60 | 3.2.1.3 | ЦКО back | 7d? | 2026-08-11 | 2026-08-19 |  | 86d |  | finish no earlier than 2026-08-19 | Успенский | 56h |  |
| 61 | 3.2.1.4 | ЦКО front | 13d? | 2026-08-12 | 2026-08-28 |  | 79d |  | start no earlier than 2026-08-12 | Касенко | 104h |  |
| 62 | 3.2.1.5 | ЦКО тестирование | 5d? | 2026-08-31 | 2026-09-04 |  | 73d | 9d | start no earlier than 2026-08-31 | Шлогауэр | 40h |  |
| 63 | 3.2.1.6 | ЦКО контент (файл-импорт) | 6d? | 2026-08-07 | 2026-08-14 |  | 89d |  | finish no earlier than 2026-08-14 | Крымов | 48h |  |
| 64 | 3.2.1.7 | ЦКО контент (правки) | 11d? | 2026-08-06 | 2026-08-20 |  | 85d |  |  | Крымов | 88h |  |
| 65 | 3.2.2 | **Новая детальная страница тарифа (Сайт)** | 42d? | 2026-08-03 | 2026-09-29 |  | 57d |  |  | Жогина Екатерина | 1128h |  |
| 66 | 3.2.2.1 | ЦКО дизайн | 21d? | 2026-08-03 | 2026-08-31 |  | 78d |  | finish no earlier than 2026-08-31 | Калинкин | 168h |  |
| 67 | 3.2.2.2 | ЦКО аналитика | 22d? | 2026-08-06 | 2026-09-04 |  | 74d |  | finish no earlier than 2026-09-04 | Мерзликин | 176h |  |
| 68 | 3.2.2.3 | ЦКО back | 22d? | 2026-08-11 | 2026-09-09 |  | 71d |  | finish no earlier than 2026-09-09 | Успенский | 176h | загрузка 20%, можно в параллель |
| 69 | 3.2.2.4 | ЦКО front | 10d? | 2026-08-31 | 2026-09-11 |  | 69d |  | finish no earlier than 2026-09-11 | Касенко | 80h |  |
| 70 | 3.2.2.5 | ЦКО тестирование | 17d? | 2026-08-26 | 2026-09-17 |  | 64d | 0d | finish no earlier than 2026-09-17 | Шлогауэр | 136h |  |
| 71 | 3.2.2.6 | ЦКО контент | 7d? | 2026-09-21 | 2026-09-29 |  | 57d |  | finish no earlier than 2026-09-29 | Крымов | 56h |  |
| 72 | 3.2.3 | **Новая детальная страница тарифа (МЛК)** | 70d? | 2026-08-10 | 2026-11-12 |  | 24d |  |  |  | 648h |  |
| 73 | 3.2.3.1 | ЦКО ресёрч БТ | 16d? | 2026-08-10 | 2026-08-31 |  | 78d |  | finish no earlier than 2026-08-31 | Жогина Екатерина | 128h |  |
| 74 | 3.2.3.2 | ЦКО дизайн | 14d? | 2026-09-01 | 2026-09-18 |  | 56d | 0d | finish no earlier than 2026-09-18 | Калинкин | 112h |  |
| 75 | 3.2.3.3 | ЦКО аналитика | 16d? | 2026-09-21 | 2026-10-09 |  | 36d | 0d | start no earlier than 2026-09-14 | Мерзликин | 128h |  |
| 76 | 3.2.3.4 | ЦКО back | 5d? | 2026-10-12 | 2026-10-16 | 75 | 36d | 12d | start no earlier than 2026-09-14 | Успенский | 40h |  |
| 77 | 3.2.3.5 | ЦКО front | 15d? | 2026-09-11 | 2026-10-01 |  | 55d |  | finish no earlier than 2026-10-01 | Касенко | 120h |  |
| 78 | 3.2.3.6 | ЦКО тестирование back | 8d | 2026-09-21 | 2026-09-30 | 74 | 56d |  | start no earlier than 2026-09-21 | Шлогауэр | 64h |  |
| 79 | 3.2.3.7 | ЦКО тестирование front | 7d? | 2026-11-04 | 2026-11-12 | 76 | 24d |  | start no earlier than 2026-10-02 | Шлогауэр | 56h |  |

Notes:
- 57: Text2: сроки актуальны, ресурс подтвержден, 57, 75 и 80 должны релизить вместе, иначе это сломает прод
- 66: Text2: новый дизайн и новая деталка, включая старые и архивные тарифы
- 72: Text2: новый дизайн выбираемого и текущего тарифа
- 73: Text2: будет понятно, не нужно ли разделять экраны на выбираемый и текущий, тогда трудозатраты х2

| ID | WBS | Task | Duration | Start | Finish | Predecessors | Total slack | Free slack | Constraint | Resources | Work | Text1 |
| --- | --- | --- | --- | --- | --- | --- | --- | --- | --- | --- | --- | --- |
| 80 | 3.2.4 | **Новая карточка тарифа во флоу дсим и телепорт (Сайт)** | 48d? | 2026-08-11 | 2026-10-14 |  | 45d |  |  | Жогина Екатерина | 592h |  |
| 81 | 3.2.4.1 | ЦКО дизайн | 1d? | 2026-08-11 | 2026-08-11 |  | 92d |  | finish no earlier than 2026-08-11 | Калинкин | 8h |  |
| 82 | 3.2.4.2 | ЦКО аналитика | 10d? | 2026-08-17 | 2026-08-28 |  | 69d | 24d | finish no earlier than 2026-08-28 | Мерзликин | 80h |  |
| 83 | 3.2.4.3 | ЦКО back | 5d | 2026-09-21 | 2026-09-25 |  | 59d |  | start no earlier than 2026-09-21 | Успенский | 40h |  |
| 84 | 3.2.4.4 | ЦКО front | 5d | 2026-10-02 | 2026-10-07 | 82 | 45d | 0d | start no earlier than 2026-10-02 | Касенко | 40h |  |
| 85 | 3.2.4.5 | ЦКО тестирование | 5d? | 2026-10-08 | 2026-10-14 | 84 | 45d |  | start no earlier than 2026-09-21 | Шлогауэр | 40h |  |
| 86 | 3.2.5 | **Новая карточка тарифа во флоу Смены ТП (ЛК)** | 20d? | 2026-08-10 | 2026-09-04 |  | 74d |  |  | Жогина Екатерина | 368h |  |
| 87 | 3.2.5.1 | ЦКО дизайн | 1d? | 2026-08-10 | 2026-08-10 |  | 93d |  | finish no earlier than 2026-08-10 | Калинкин | 8h |  |
| 88 | 3.2.5.2 | ЦКО аналитика | 3d? | 2026-08-12 | 2026-08-14 |  | 84d | 0d | finish no earlier than 2026-08-14 | Мерзликин | 24h |  |
| 89 | 3.2.5.3 | ЦКО back | 5d | 2026-08-17 | 2026-08-21 | 88 | 84d |  |  | Потребность back ЦКО | 40h |  |
| 90 | 3.2.5.4 | ЦКО front | 10d | 2026-08-19 | 2026-09-01 |  | 77d |  | start no earlier than 2026-08-19 | Потребность front ЦКО | 80h |  |
| 91 | 3.2.5.5 | ЦКО тестирование | 7d | 2026-08-27 | 2026-09-04 |  | 73d |  | start no earlier than 2026-08-27 | Потребность test ЦКО | 56h |  |
| 92 | 3.2.6 | **Текущий экран Мой тариф (ЛК) подключенный** | 18d | 2026-08-17 | 2026-09-09 |  | 71d |  |  | Жогина Екатерина | 288h |  |
| 93 | 3.2.6.1 | ЦКО аналитика | 5d | 2026-08-17 | 2026-08-21 |  | 71d | 0d | start no earlier than 2026-08-17 | Потребность аналитик ЦКО | 40h |  |
| 94 | 3.2.6.2 | ЦКО back | 5d | 2026-08-24 | 2026-08-28 | 93 | 71d | 0d |  | Потребность back ЦКО | 40h |  |
| 95 | 3.2.6.3 | ЦКО front | 3d | 2026-08-31 | 2026-09-02 | 94 | 71d | 0d |  | Потребность front ЦКО | 24h |  |
| 96 | 3.2.6.4 | ЦКО тестирование | 5d | 2026-09-03 | 2026-09-09 | 95 | 71d |  | start no earlier than 2026-09-03 | Потребность test ЦКО | 40h |  |
| 97 | 3.3 | **BSS** | 35d? | 2026-07-06 | 2026-08-21 |  | 84d |  |  | Рассветова Инга | 400h |  |
| 98 | 3.3.1 | BSS анализ | 10d? | 2026-07-06 | 2026-07-17 |  | 109d |  | finish no earlier than 2026-07-17 |  |  | https://jira.megafon.ru/browse/BSS-331688 |
| 99 | 3.3.2 | BSS конфиг | 10d? | 2026-07-20 | 2026-07-31 |  | 99d |  | finish no earlier than 2026-07-31 | САдовая | 80h |  |
| 100 | 3.3.3 | BSS прочие | 5d? | 2026-08-17 | 2026-08-21 | 35 | 84d |  | finish no earlier than 2026-08-14 | Тарасов | 40h |  |
| 101 | 3.3.4 | ФТ | 10d? | 2026-08-10 | 2026-08-21 |  | 84d |  | start no earlier than 2026-08-10 |  |  |  |
| 102 | 3.4 | **RND** | 1d? | 2026-08-06 | 2026-08-06 |  | 95d |  |  |  |  |  |
| 103 | 3.4.1 | RND конфиг для семьи | 1d? | 2026-08-06 | 2026-08-06 |  | 95d |  |  |  |  | https://jira.megafon.ru/browse/RFC-409857 |

Notes:
- 83: Text2: без аналитики не можем подтвердить срок
- 87: Text2: в плане не было
- 92: Text2: доработка к перезапуску - бенефиты, безлимитные ГБ, остальные объемы
- 100: Text2: нотиф еще нет
- 103: Text2: нужны сроки, когда будет готово (до 24.08 аналитик в отпуске)

| ID | WBS | Task | Duration | Start | Finish | Predecessors | Total slack | Free slack | Constraint | Resources | Work | Text2 | Text1 |
| --- | --- | --- | --- | --- | --- | --- | --- | --- | --- | --- | --- | --- | --- |
| 104 | 3.5 | **Заморозка** | 1d? | 2026-08-06 | 2026-08-06 |  | 95d |  |  |  |  |  |  |
| 105 | 3.5.1 | **BSS** | 1d? | 2026-08-06 | 2026-08-06 |  | 95d |  |  |  |  |  |  |
| 106 | 3.5.1.1 | BSS анализ | 1d? | 2026-08-06 | 2026-08-06 |  | 95d |  |  |  |  |  |  |
| 107 | 3.5.1.2 | BSS конфиг | 1d? | 2026-08-06 | 2026-08-06 |  | 95d |  |  |  |  |  |  |
| 108 | 3.5.1.3 | BSS прочие | 1d? | 2026-08-06 | 2026-08-06 |  | 95d |  |  |  |  |  |  |
| 109 | 3.5.1.4 | ФТ | 1d? | 2026-08-06 | 2026-08-06 |  | 95d |  |  |  |  |  |  |
| 110 | 3.6 | ЦКО контент | 1d? | 2026-08-06 | 2026-08-06 |  | 95d |  |  | Крымов | 8h |  |  |
| 111 | 3.7 | **ФТ** | 65d? | 2026-09-18 | 2026-12-16 |  | 0d |  |  |  |  |  |  |
| 112 | 3.7.1 | ФТ сайт | 1d? | 2026-09-18 | 2026-09-18 | 62, 70 | 64d |  |  |  |  | тесты после запуска |  |
| 113 | 3.7.2 | ФТ ЛК | 1d? | 2026-12-16 | 2026-12-16 | 70, 91, 299 | 0d |  |  |  |  |  |  |
| 114 | 4 | **МегаСилы** | 86d? | 2026-07-15 | 2026-11-10 |  | 26d |  |  |  | 3736h |  |  |
| 115 | 4.1 | **Бизнес** | 2d? | 2026-09-03 | 2026-09-04 |  | 64d |  |  |  | 16h |  |  |
| 116 | 4.1.1 | Параметры МС (цены) | 2d? | 2026-09-03 | 2026-09-04 |  | 64d | 0d | finish no earlier than 2026-09-04 | Константинова Марина | 16h |  |  |
| 117 | 4.2 | **ЦКО Общий блок** | 73d? | 2026-08-03 | 2026-11-10 |  | 26d |  |  | Жогина Екатерина | 2304h |  |  |
| 118 | 4.2.1 | **Отображение триала и предактивации МС в ЛК (смена тп, экран МС, мой тариф, чекаут смены тп, чекаут подкл/откл МС)** | 25d? | 2026-08-03 | 2026-09-04 |  | 74d |  |  | Маммедова Вероника | 576h | уточнить сроки с Вероникой |  |
| 119 | 4.2.1.1 | ЦКО дизайн | 5d? | 2026-08-10 | 2026-08-14 |  | 89d |  | finish no earlier than 2026-08-14 | Юрасов | 40h |  |  |
| 120 | 4.2.1.2 | ЦКО аналитика | 15d? | 2026-08-03 | 2026-08-21 |  | 84d |  | start no earlier than 2026-08-03 | Роган | 120h |  |  |
| 121 | 4.2.1.3 | ЦКО back | 1d? | 2026-08-06 | 2026-08-06 |  | 95d |  |  | Судариков | 8h |  |  |
| 122 | 4.2.1.4 | ЦКО front | 10d? | 2026-08-10 | 2026-08-21 |  | 84d |  | finish no earlier than 2026-08-21 | САвлук | 80h |  |  |
| 123 | 4.2.1.5 | ЦКО тестирование | 16d? | 2026-08-14 | 2026-09-04 |  | 74d |  | finish no earlier than 2026-09-04 | Колотыгин | 128h | тест с перерывами | 10 сентября релиз |
| 124 | 4.2.2 | **Триалы МС в ПК Предактивация МС в ПК (Сайт+ЛК)** | 12d? | 2026-08-10 | 2026-08-25 |  | 82d |  |  | Жогина Екатерина | 232h |  |  |
| 125 | 4.2.2.1 | ЦКО аналитика | 2d? | 2026-08-10 | 2026-08-11 |  | 92d |  | finish no earlier than 2026-08-11 | Мерзликин | 16h |  |  |
| 126 | 4.2.2.2 | ЦКО back | 5d | 2026-08-12 | 2026-08-18 |  | 82d | 0d | finish no earlier than 2026-08-18 | Успенский | 40h |  |  |
| 127 | 4.2.2.3 | ЦКО тестирование | 5d | 2026-08-19 | 2026-08-25 | 126 | 82d |  |  | Шлогауэр | 40h |  |  |
| 128 | 4.2.2.4 | ЦКО контент | 5d | 2026-08-12 | 2026-08-18 |  | 87d |  | start no earlier than 2026-08-12 | Крымов | 40h |  |  |

| ID | WBS | Task | Duration | Start | Finish | Predecessors | Total slack | Free slack | Constraint | Resources | Work |
| --- | --- | --- | --- | --- | --- | --- | --- | --- | --- | --- | --- |
| 129 | 4.2.3 | **Лендинг Мегасил (Сайт)** | 31d? | 2026-08-31 | 2026-10-09 |  | 48d |  |  | Жогина Екатерина | 416h |
| 130 | 4.2.3.1 | БФ | 1d? | 2026-08-31 | 2026-08-31 |  | 78d |  | finish no earlier than 2026-08-31 | Константинова Марина | 8h |
| 131 | 4.2.3.2 | ЦКО дизайн | 5d | 2026-09-21 | 2026-09-25 |  | 48d | 0d | start no earlier than 2026-09-21 | Калинкин | 40h |
| 132 | 4.2.3.3 | ЦКО аналитика | 1d? | 2026-09-28 | 2026-09-28 |  | 58d |  | start no earlier than 2026-09-28 |  |  |
| 133 | 4.2.3.4 | ЦКО front | 8d | 2026-09-28 | 2026-10-06 | 131 | 48d | 0d | start no earlier than 2026-09-28 | Касенко | 64h |
| 134 | 4.2.3.5 | ЦКО контент | 4d | 2026-10-01 | 2026-10-05 |  | 52d |  | finish no earlier than 2026-10-05 | Крымов | 32h |
| 135 | 4.2.3.6 | ЦКО тестирование | 3d? | 2026-10-07 | 2026-10-09 | 133 | 48d |  | start no earlier than 2026-09-28 | Шлогауэр | 24h |
| 136 | 4.2.4 | **Лендинг-конструктор МС** | 33d? | 2026-09-28 | 2026-11-10 |  | 26d |  |  | Жогина Екатерина | 496h |
| 137 | 4.2.4.1 | ЦКО дизайн | 5d | 2026-09-28 | 2026-10-02 |  | 41d | 1d | start no earlier than 2026-09-28 | Калинкин | 40h |
| 138 | 4.2.4.2 | ЦКО аналитика | 5d | 2026-10-05 | 2026-10-09 | 137 | 40d | 0d | start no earlier than 2026-10-05 | Мерзликин | 40h |
| 139 | 4.2.4.3 | ЦКО back | 3d | 2026-10-12 | 2026-10-14 | 138 | 40d | 14d |  | Успенский | 24h |
| 140 | 4.2.4.4 | ЦКО front | 8d | 2026-10-12 | 2026-10-21 |  | 40d |  | start no earlier than 2026-10-12 | Касенко | 64h |
| 141 | 4.2.4.5 | ЦКО контент | 3d? | 2026-10-19 | 2026-10-21 |  | 40d |  | finish no earlier than 2026-10-21 | Крымов | 24h |
| 142 | 4.2.4.6 | ЦКО тестирование | 5d | 2026-11-04 | 2026-11-10 | 139 | 26d |  | start no earlier than 2026-10-22 | Шлогауэр | 40h |
| 143 | 4.2.5 | **ФТ** | 1d? | 2026-08-06 | 2026-08-06 |  | 95d |  |  |  |  |
| 144 | 4.2.5.1 | ФТ сайт | 1d? | 2026-08-06 | 2026-08-06 |  | 95d |  |  |  |  |
| 145 | 4.2.5.2 | ФТ ЛК | 1d? | 2026-08-06 | 2026-08-06 |  | 95d |  |  |  |  |
| 146 | 4.3 | **Связь при нуле** | 32d? | 2026-07-15 | 2026-08-27 |  | 80d |  |  |  | 208h |
| 147 | 4.3.1 | **ЦКО Правка алерта** | 16d? | 2026-08-06 | 2026-08-27 |  | 80d |  |  | Жогина Екатерина | 208h |
| 148 | 4.3.1.1 | БТ с текстами Алерта | 1d? | 2026-08-06 | 2026-08-06 |  | 69d |  |  | Константинова Марина | 8h |
| 149 | 4.3.1.2 | ЦКО аналитика | 5d | 2026-08-17 | 2026-08-21 |  | 54d | 0d | start no earlier than 2026-08-17 | Потребность аналитик ЦКО | 40h |
| 150 | 4.3.1.3 | ЦКО back | 2d | 2026-08-24 | 2026-08-25 | 149 | 54d | 0d |  | Потребность back ЦКО | 16h |
| 151 | 4.3.1.4 | ЦКО тестирование | 2d | 2026-08-26 | 2026-08-27 | 150 | 54d |  |  | Потребность test ЦКО | 16h |
| 152 | 4.3.2 | RND_правка алерта | 1d? | 2026-08-06 | 2026-08-06 |  | 95d |  |  |  |  |

Notes:
- 132: Text2: нужна?
- 136: Text2: универсальный для всех МС, нужен только контент. Кроме Консьержа
- 152: Text2: после аналитики будет понятно, нужен ли Rnd

| ID | WBS | Task | Duration | Start | Finish | Predecessors | Total slack | Free slack | Constraint | Resources | Work | Text2 |
| --- | --- | --- | --- | --- | --- | --- | --- | --- | --- | --- | --- | --- |
| 153 | 4.3.3 | **BSS** | 23d? | 2026-07-15 | 2026-08-14 |  | 89d |  |  |  |  |  |
| 154 | 4.3.3.1 | BSS Анализ | 1d? | 2026-08-06 | 2026-08-06 |  | 95d |  |  |  |  |  |
| 155 | 4.3.3.2 | BSS Конфиг | 23d? | 2026-07-15 | 2026-08-14 |  | 89d |  | finish no earlier than 2026-08-14 |  |  | только ПиУ - готово, нужны остальные домены |
| 156 | 4.3.3.3 | BSS прочие | 5d? | 2026-08-10 | 2026-08-14 |  | 89d |  | finish no earlier than 2026-08-14 |  |  | нет нотиф |
| 157 | 4.3.3.4 | ФТ | 10d? | 2026-08-03 | 2026-08-14 |  | 89d |  | finish no earlier than 2026-08-14 |  |  | протестировано только ПиУ |
| 158 | 4.3.4 | **ФТ** | 1d? | 2026-08-06 | 2026-08-06 |  | 95d |  |  |  |  |  |
| 159 | 4.3.4.1 | ФТ сайт | 1d? | 2026-08-06 | 2026-08-06 |  | 95d |  |  |  |  |  |
| 160 | 4.3.4.2 | ФТ ЛК | 1d? | 2026-08-06 | 2026-08-06 |  | 95d |  |  |  |  |  |
| 161 | 4.4 | **Бонусные минуты** | 44d? | 2026-07-15 | 2026-09-14 |  | 68d |  |  |  | 232h | открытый вопрос - нужно ли учесть платежное поведение |
| 162 | 4.4.1 | Сформулировать вопросы по БТ | 1d? | 2026-08-06 | 2026-08-06 |  | 95d |  |  | Жогина Екатерина | 8h |  |
| 163 | 4.4.2 | БТ | 1d? | 2026-08-06 | 2026-08-06 |  | 95d |  |  | Константинова Марина | 8h | нужен СJ |
| 164 | 4.4.3 | **ЦКО** | 21d | 2026-08-17 | 2026-09-14 |  | 68d |  |  |  | 216h |  |
| 165 | 4.4.3.1 | ЦКО дизайн | 3d | 2026-08-17 | 2026-08-19 |  | 71d | 0d | start no earlier than 2026-08-17 | Потребность дизайн ЦКО | 24h | используем дизайны по ГБ |
| 166 | 4.4.3.2 | ЦКО аналитика | 10d | 2026-08-20 | 2026-09-02 | 165 | 71d | 0d |  | Потребность аналитик ЦКО | 80h |  |
| 167 | 4.4.3.3 | ЦКО back | 5d | 2026-09-03 | 2026-09-09 | 166 | 71d |  |  | Потребность back ЦКО | 40h |  |
| 168 | 4.4.3.4 | ЦКО front | 5d | 2026-09-03 | 2026-09-09 |  | 68d | 0d | start no earlier than 2026-09-03 | Потребность front ЦКО | 40h |  |
| 169 | 4.4.3.5 | ЦКО тестирование | 3d | 2026-09-10 | 2026-09-14 | 168 | 68d |  |  | Потребность test ЦКО | 24h |  |
| 170 | 4.4.3.6 | ЦКО контент | 1d | 2026-09-07 | 2026-09-07 |  | 73d |  | start no earlier than 2026-09-07 | Крымов | 8h |  |
| 171 | 4.4.4 | **BSS** | 28d? | 2026-07-15 | 2026-08-21 |  | 84d |  |  |  |  |  |
| 172 | 4.4.4.1 | BSS Анализ | 1d? | 2026-08-06 | 2026-08-06 |  | 95d |  | finish no earlier than 2026-08-06 |  |  |  |
| 173 | 4.4.4.2 | BSS Конфиг | 5d? | 2026-07-15 | 2026-07-21 |  | 107d |  | finish no earlier than 2026-07-21 |  |  |  |
| 174 | 4.4.4.3 | BSS прочие | 4d? | 2026-08-14 | 2026-08-19 |  | 86d |  | finish no earlier than 2026-08-19 |  |  | нет нотиф |
| 175 | 4.4.4.4 | ФТ | 10d? | 2026-08-10 | 2026-08-21 |  | 84d |  | finish no earlier than 2026-08-21 |  |  |  |
| 176 | 4.5 | **Бонусные ГБ** | 4d? | 2026-08-31 | 2026-09-03 |  | 75d |  |  |  | 24h |  |
| 177 | 4.5.1 | BSS | 1d? | 2026-08-31 | 2026-08-31 |  | 75d | 0d | start no earlier than 2026-08-31 |  |  | нужны ли конфиг BSS |
| 178 | 4.5.2 | ЦКО тестирование | 3d | 2026-09-01 | 2026-09-03 | 177 | 75d |  |  | Потребность test ЦКО | 24h |  |

| ID | WBS | Task | Duration | Start | Finish | Total slack | Constraint | Resources | Work | Text1 | Text2 |
| --- | --- | --- | --- | --- | --- | --- | --- | --- | --- | --- | --- |
| 179 | 4.6 | **Безлимитный интернет** | 7d? | 2026-08-06 | 2026-08-14 | 89d |  |  | 48h |  |  |
| 180 | 4.6.1 | **Флоу подключени БИ для старших ТП (ЛК)** | 1d? | 2026-08-06 | 2026-08-06 | 95d |  |  | 48h | нет оценок | что это за задача? |
| 181 | 4.6.1.1 | ЦКО дизайн | 1d? | 2026-08-06 | 2026-08-06 | 95d |  | Потребность дизайн ЦКО | 8h |  |  |
| 182 | 4.6.1.2 | ЦКО аналитика | 1d? | 2026-08-06 | 2026-08-06 | 95d |  | Потребность аналитик ЦКО | 8h |  |  |
| 183 | 4.6.1.3 | ЦКО back | 1d? | 2026-08-06 | 2026-08-06 | 95d |  | Потребность back ЦКО | 8h |  |  |
| 184 | 4.6.1.4 | ЦКО front | 1d? | 2026-08-06 | 2026-08-06 | 95d |  | Потребность front ЦКО | 8h |  |  |
| 185 | 4.6.1.5 | ЦКО контент | 1d? | 2026-08-06 | 2026-08-06 | 95d |  | Крымов | 8h |  |  |
| 186 | 4.6.1.6 | ЦКО тестирование | 1d? | 2026-08-06 | 2026-08-06 | 95d |  | Потребность test ЦКО | 8h |  |  |
| 187 | 4.6.2 | **BSS** | 7d? | 2026-08-06 | 2026-08-14 | 89d |  |  |  |  |  |
| 188 | 4.6.2.1 | BSS Анализ | 1d? | 2026-08-06 | 2026-08-06 | 95d |  |  |  |  |  |
| 189 | 4.6.2.2 | BSS Конфиг | 1d? | 2026-08-06 | 2026-08-06 | 95d |  |  |  |  |  |
| 190 | 4.6.2.3 | BSS прочие | 5d? | 2026-08-10 | 2026-08-14 | 89d | finish no earlier than 2026-08-14 |  |  |  |  |
| 191 | 4.6.2.4 | ФТ | 1d? | 2026-08-06 | 2026-08-06 | 95d |  |  |  |  |  |
| 192 | 4.6.3 | **ФТ** | 1d? | 2026-08-06 | 2026-08-06 | 95d |  |  |  |  |  |
| 193 | 4.6.3.1 | ФТ ЛК | 1d? | 2026-08-06 | 2026-08-06 | 95d |  |  |  |  |  |
| 194 | 4.7 | **БВС для Премиума** | 40d? | 2026-08-06 | 2026-09-30 | 56d |  |  | 8h |  |  |
| 195 | 4.7.1 | ЦКО Контент | 1d? | 2026-09-30 | 2026-09-30 | 56d | finish no earlier than 2026-09-30 | Крымов | 8h |  |  |
| 196 | 4.7.2 | **BSS** | 27d? | 2026-08-06 | 2026-09-11 | 69d |  |  |  |  |  |
| 197 | 4.7.2.1 | BSS Анализ | 1d? | 2026-08-06 | 2026-08-06 | 95d |  |  |  |  |  |
| 198 | 4.7.2.2 | BSS Конфиг | 5d? | 2026-08-10 | 2026-08-14 | 89d | finish no earlier than 2026-08-14 |  |  |  |  |
| 199 | 4.7.2.3 | BSS прочие | 1d? | 2026-08-06 | 2026-08-06 | 95d |  |  |  |  |  |
| 200 | 4.7.2.4 | ФТ | 10d? | 2026-08-31 | 2026-09-11 | 69d | finish no earlier than 2026-09-11 |  |  |  |  |
| 201 | 4.8 | **5G Режим** | 37d? | 2026-08-06 | 2026-09-25 | 59d |  |  | 216h |  |  |
| 202 | 4.8.1 | **Флоу подключения МС 5G (ЛК)** | 37d? | 2026-08-06 | 2026-09-25 | 59d |  |  | 216h |  |  |
| 203 | 4.8.1.1 | БТ | 1d? | 2026-08-06 | 2026-08-06 | 95d |  | Константинова Марина | 8h |  |  |
| 204 | 4.8.1.2 | CJ | 1d? | 2026-08-06 | 2026-08-06 | 95d |  | Константинова Марина | 8h |  |  |
| 205 | 4.8.1.3 | ЦКО дизайн | 5d? | 2026-08-31 | 2026-09-04 | 74d | finish no earlier than 2026-09-04 | Потребность дизайн ЦКО | 40h |  |  |
| 206 | 4.8.1.4 | ЦКО аналитика | 5d? | 2026-09-07 | 2026-09-11 | 69d | finish no earlier than 2026-09-11 | Потребность аналитик ЦКО | 40h |  |  |
| 207 | 4.8.1.5 | ЦКО back | 5d | 2026-08-06 | 2026-08-12 | 91d |  | Потребность back ЦКО | 40h |  |  |
| 208 | 4.8.1.6 | ЦКО front | 5d? | 2026-09-14 | 2026-09-18 | 64d | finish no earlier than 2026-09-18 | Потребность front ЦКО | 40h |  |  |
| 209 | 4.8.1.7 | ЦКО тестирование | 5d? | 2026-09-21 | 2026-09-25 | 59d | finish no earlier than 2026-09-25 | Потребность test ЦКО | 40h |  |  |

| ID | WBS | Task | Duration | Start | Finish | Predecessors | Total slack | Free slack | Constraint | Resources | Work | Text1 |
| --- | --- | --- | --- | --- | --- | --- | --- | --- | --- | --- | --- | --- |
| 210 | 4.8.2 | **BSS** | 27d? | 2026-08-06 | 2026-09-11 |  | 69d |  |  |  |  |  |
| 211 | 4.8.2.1 | BSS Анализ | 1d? | 2026-08-06 | 2026-08-06 |  | 95d |  |  |  |  |  |
| 212 | 4.8.2.2 | BSS Конфиг | 5d? | 2026-08-17 | 2026-08-21 |  | 84d |  | finish no earlier than 2026-08-21 |  |  |  |
| 213 | 4.8.2.3 | BSS прочие | 3d? | 2026-08-19 | 2026-08-21 |  | 84d |  | finish no earlier than 2026-08-21 |  |  | нет нотиф |
| 214 | 4.8.2.4 | ФТ | 10d? | 2026-08-31 | 2026-09-11 |  | 69d |  | finish no earlier than 2026-09-11 |  |  |  |
| 215 | 4.8.3 | **ФТ** | 1d? | 2026-08-06 | 2026-08-06 |  | 95d |  |  |  |  |  |
| 216 | 4.8.3.1 | ФТ ЛК | 1d? | 2026-08-06 | 2026-08-06 |  | 95d |  |  |  |  |  |
| 217 | 4.9 | **Моя безопасность +, Семейная безопаснось +** | 32d? | 2026-08-06 | 2026-09-18 |  | 64d |  |  |  | 216h |  |
| 218 | 4.9.1 | **Флоу подключения МС Ева (ЛК)** | 32d? | 2026-08-06 | 2026-09-18 |  | 64d |  |  |  | 216h |  |
| 219 | 4.9.1.1 | БТ | 1d? | 2026-08-06 | 2026-08-06 |  | 95d |  |  | Константинова Марина | 8h |  |
| 220 | 4.9.1.2 | CJ | 1d? | 2026-08-06 | 2026-08-06 |  | 95d |  |  | Константинова Марина | 8h |  |
| 221 | 4.9.1.3 | ЦКО дизайн | 5d? | 2026-08-24 | 2026-08-28 |  | 79d |  | finish no earlier than 2026-08-28 | Потребность дизайн ЦКО | 40h |  |
| 222 | 4.9.1.4 | ЦКО аналитика | 5d? | 2026-08-31 | 2026-09-04 |  | 74d |  | finish no earlier than 2026-09-04 | Потребность аналитик ЦКО | 40h |  |
| 223 | 4.9.1.5 | ЦКО back | 5d | 2026-08-06 | 2026-08-12 |  | 91d |  |  | Потребность back ЦКО | 40h |  |
| 224 | 4.9.1.6 | ЦКО front | 5d? | 2026-09-07 | 2026-09-11 |  | 69d |  | finish no earlier than 2026-09-11 | Потребность front ЦКО | 40h |  |
| 225 | 4.9.1.7 | ЦКО тестирование | 5d? | 2026-09-14 | 2026-09-18 |  | 64d |  | finish no earlier than 2026-09-18 | Потребность test ЦКО | 40h |  |
| 226 | 4.9.2 | **BSS** | 27d? | 2026-08-06 | 2026-09-11 |  | 69d |  |  |  |  |  |
| 227 | 4.9.2.1 | BSS Анализ | 1d? | 2026-08-06 | 2026-08-06 |  | 95d |  |  |  |  |  |
| 228 | 4.9.2.2 | BSS Конфиг | 5d? | 2026-08-10 | 2026-08-14 |  | 89d |  | finish no earlier than 2026-08-14 |  |  |  |
| 229 | 4.9.2.3 | BSS прочие | 4d? | 2026-08-31 | 2026-09-03 |  | 75d |  | finish no earlier than 2026-09-03 |  |  | нет нотиф |
| 230 | 4.9.2.4 | ФТ | 10d? | 2026-08-31 | 2026-09-11 |  | 69d |  | finish no earlier than 2026-09-11 |  |  |  |
| 231 | 4.9.3 | **ФТ** | 1d? | 2026-08-06 | 2026-08-06 |  | 95d |  |  |  |  |  |
| 232 | 4.9.3.1 | ФТ ЛК | 1d? | 2026-08-06 | 2026-08-06 |  | 95d |  |  |  |  |  |
| 233 | 4.10 | **МегаКино** | 43d? | 2026-08-06 | 2026-10-03 |  | 53d |  |  |  | 216h |  |
| 234 | 4.10.1 | **Флоу подключения МС Мегакино (ЛК)** | 43d? | 2026-08-06 | 2026-10-03 |  | 53d |  |  |  | 216h |  |
| 235 | 4.10.1.1 | БТ | 1d? | 2026-08-06 | 2026-08-06 |  | 95d |  |  | Константинова Марина | 8h |  |
| 236 | 4.10.1.2 | CJ | 1d? | 2026-08-06 | 2026-08-06 |  | 95d |  |  | Константинова Марина | 8h |  |
| 237 | 4.10.1.3 | ЦКО дизайн | 5d | 2026-08-24 | 2026-08-28 |  | 64d | 5d | start no earlier than 2026-08-24 | Потребность дизайн ЦКО | 40h |  |
| 238 | 4.10.1.4 | ЦКО аналитика | 5d? | 2026-09-07 | 2026-09-11 | 237 | 59d | 0d | finish no earlier than 2026-09-11 | Потребность аналитик ЦКО | 40h |  |
| 239 | 4.10.1.5 | ЦКО back | 5d? | 2026-09-14 | 2026-09-18 | 238 | 59d | 6d | finish no earlier than 2026-09-18 | Потребность back ЦКО | 40h |  |
| 240 | 4.10.1.6 | ЦКО front | 5d? | 2026-09-21 | 2026-09-25 | 238 | 54d | 1d | finish no earlier than 2026-09-25 | Потребность front ЦКО | 40h |  |
| 241 | 4.10.1.7 | ЦКО тестирование | 5d? | 2026-09-29 | 2026-10-03 | 239, 240 | 53d |  | finish no earlier than 2026-10-03 | Потребность test ЦКО | 40h |  |

| ID | WBS | Task | Duration | Start | Finish | Predecessors | Total slack | Free slack | Constraint | Resources | Work |
| --- | --- | --- | --- | --- | --- | --- | --- | --- | --- | --- | --- |
| 242 | 4.10.2 | **BSS** | 27d? | 2026-08-06 | 2026-09-11 |  | 69d |  |  |  |  |
| 243 | 4.10.2.1 | BSS Анализ | 1d? | 2026-08-06 | 2026-08-06 |  | 95d |  |  |  |  |
| 244 | 4.10.2.2 | BSS Конфиг | 5d? | 2026-08-17 | 2026-08-21 |  | 84d |  | finish no earlier than 2026-08-21 |  |  |
| 245 | 4.10.2.3 | BSS прочие | 1d? | 2026-08-06 | 2026-08-06 |  | 95d |  |  |  |  |
| 246 | 4.10.2.4 | ФТ | 10d? | 2026-08-31 | 2026-09-11 |  | 69d |  | finish no earlier than 2026-09-11 |  |  |
| 247 | 4.10.3 | **ФТ** | 1d? | 2026-08-06 | 2026-08-06 |  | 95d |  |  |  |  |
| 248 | 4.10.3.1 | ФТ ЛК | 1d? | 2026-08-06 | 2026-08-06 |  | 95d |  |  |  |  |
| 249 | 4.11 | **СтартЛайт** | 27d? | 2026-08-06 | 2026-09-11 |  | 69d |  |  |  |  |
| 250 | 4.11.1 | **BSS** | 27d? | 2026-08-06 | 2026-09-11 |  | 69d |  |  |  |  |
| 251 | 4.11.1.1 | BSS Анализ | 1d? | 2026-08-06 | 2026-08-06 |  | 95d |  |  |  |  |
| 252 | 4.11.1.2 | BSS Конфиг | 5d? | 2026-08-17 | 2026-08-21 |  | 84d |  | finish no earlier than 2026-08-21 |  |  |
| 253 | 4.11.1.3 | BSS прочие | 1d? | 2026-08-06 | 2026-08-06 |  | 95d |  |  |  |  |
| 254 | 4.11.1.4 | ФТ | 10d? | 2026-08-31 | 2026-09-11 |  | 69d |  | finish no earlier than 2026-09-11 |  |  |
| 255 | 4.12 | **Консьерж сервис** | 40d? | 2026-08-06 | 2026-09-30 |  | 56d |  |  |  | 248h |
| 256 | 4.12.1 | **Флоу подключения МФ Консьерж-сервис (ЛК)** | 40d? | 2026-08-06 | 2026-09-30 |  | 56d |  |  |  | 240h |
| 257 | 4.12.1.1 | БТ | 1d? | 2026-08-06 | 2026-08-06 |  | 95d |  |  | Константинова Марина | 8h |
| 258 | 4.12.1.2 | CJ | 1d? | 2026-08-06 | 2026-08-06 |  | 95d |  |  | Константинова Марина | 8h |
| 259 | 4.12.1.3 | ЦКО дизайн | 5d | 2026-08-24 | 2026-08-28 |  | 61d | 5d | start no earlier than 2026-08-24 | Потребность дизайн ЦКО | 40h |
| 260 | 4.12.1.4 | ЦКО аналитика | 5d? | 2026-09-07 | 2026-09-11 | 259 | 56d | 0d | finish no earlier than 2026-09-11 | Потребность аналитик ЦКО | 40h |
| 261 | 4.12.1.5 | ЦКО back | 5d | 2026-09-14 | 2026-09-18 | 260 | 61d | 5d | start no earlier than 2026-08-31 | Потребность back ЦКО | 40h |
| 262 | 4.12.1.6 | ЦКО front | 10d? | 2026-09-14 | 2026-09-25 | 260 | 56d | 0d | finish no earlier than 2026-09-25 | Потребность front ЦКО | 80h |
| 263 | 4.12.1.7 | ЦКО тестирование | 3d? | 2026-09-28 | 2026-09-30 | 261, 262 | 56d |  | finish no earlier than 2026-09-30 | Потребность test ЦКО | 24h |
| 264 | 4.12.2 | ЦКО Контент для деталки | 1d? | 2026-08-06 | 2026-08-06 |  | 95d |  |  | Крымов | 8h |
| 265 | 4.12.3 | **BSS** | 17d? | 2026-08-06 | 2026-08-28 |  | 79d |  |  |  |  |
| 266 | 4.12.3.1 | BSS Анализ | 1d? | 2026-08-06 | 2026-08-06 |  | 95d |  |  |  |  |
| 267 | 4.12.3.2 | BSS Конфиг | 1d? | 2026-08-06 | 2026-08-06 |  | 95d |  |  |  |  |
| 268 | 4.12.3.3 | BSS прочие | 1d? | 2026-08-06 | 2026-08-06 |  | 95d |  |  |  |  |
| 269 | 4.12.3.4 | ФТ | 10d? | 2026-08-17 | 2026-08-28 |  | 79d |  | finish no earlier than 2026-08-28 |  |  |

| ID | WBS | Task | Duration | Start | Finish | Predecessors | Total slack | Free slack | Constraint | Resources | Work | Text2 |
| --- | --- | --- | --- | --- | --- | --- | --- | --- | --- | --- | --- | --- |
| 270 | 4.12.4 | **ФТ** | 1d? | 2026-08-06 | 2026-08-06 |  | 95d |  |  |  |  |  |
| 271 | 4.12.4.1 | ФТ Cайт | 1d? | 2026-08-06 | 2026-08-06 |  | 95d |  |  |  |  |  |
| 272 | 5 | **Доп.продукты** | 15d? | 2026-09-07 | 2026-09-25 |  | 59d |  |  |  | 24h |  |
| 273 | 5.1 | **Абонементы** | 1d? | 2026-09-07 | 2026-09-07 | 55 | 73d |  |  |  | 8h |  |
| 274 | 5.1.1 | ЦКО контент | 1d? | 2026-09-07 | 2026-09-07 |  | 73d |  |  | Крымов | 8h |  |
| 275 | 5.2 | **Расширители** | 15d? | 2026-09-07 | 2026-09-25 | 116 | 59d |  |  |  | 16h |  |
| 276 | 5.2.1 | **Много минут** | 15d? | 2026-09-07 | 2026-09-25 |  | 59d |  |  |  | 8h |  |
| 277 | 5.2.1.1 | ЦКО контент | 1d? | 2026-09-07 | 2026-09-07 |  | 73d |  |  | Крымов | 8h |  |
| 278 | 5.2.1.2 | **BSS** | 15d? | 2026-09-07 | 2026-09-25 |  | 59d |  |  |  |  |  |
| 279 | 5.2.1.2.1 | BSS Анализ | 1d? | 2026-09-07 | 2026-09-07 |  | 73d |  |  |  |  |  |
| 280 | 5.2.1.2.2 | BSS Конфиг | 1d? | 2026-09-07 | 2026-09-07 |  | 73d |  |  |  |  |  |
| 281 | 5.2.1.2.3 | BSS прочие | 5d? | 2026-09-07 | 2026-09-11 |  | 69d |  | finish no earlier than 2026-08-28 |  |  |  |
| 282 | 5.2.1.2.4 | ФТ | 10d? | 2026-09-14 | 2026-09-25 |  | 59d |  | finish no earlier than 2026-09-25 |  |  |  |
| 283 | 5.2.2 | **Много СМС** | 15d? | 2026-09-07 | 2026-09-25 |  | 59d |  |  |  | 8h |  |
| 284 | 5.2.2.1 | ЦКО контент | 1d? | 2026-09-07 | 2026-09-07 |  | 73d |  |  | Крымов | 8h |  |
| 285 | 5.2.2.2 | **BSS** | 15d? | 2026-09-07 | 2026-09-25 |  | 59d |  |  |  |  |  |
| 286 | 5.2.2.2.1 | BSS Анализ | 1d? | 2026-09-07 | 2026-09-07 |  | 73d |  |  |  |  |  |
| 287 | 5.2.2.2.2 | BSS Конфиг | 1d? | 2026-09-07 | 2026-09-07 |  | 73d |  |  |  |  |  |
| 288 | 5.2.2.2.3 | BSS прочие | 5d? | 2026-09-07 | 2026-09-11 |  | 69d |  | finish no earlier than 2026-08-28 |  |  |  |
| 289 | 5.2.2.2.4 | ФТ | 10d? | 2026-09-14 | 2026-09-25 |  | 59d |  | finish no earlier than 2026-09-25 |  |  |  |
| 290 | 6 | Запуск Орига 1.0 | 1d? | 2026-12-17 | 2026-12-17 | 2, 53, 114, 272 | 0d |  |  |  |  |  |
| 291 | 7 | Тех. Долг после запуска | 1d? | 2026-08-06 | 2026-08-06 |  | 96d |  |  |  |  |  |
| 292 | 8 | **Новый экран Мой тариф (ЛК) подключенный** | 93d? | 2026-08-10 | 2026-12-15 |  | 2d |  |  | Жогина Екатерина | 1392h | редизайн старого экрана |
| 293 | 8.1 | ЦКО ресёрч БТ | 16d? | 2026-08-10 | 2026-08-31 |  | 79d |  | finish no earlier than 2026-08-31 | Жогина Екатерина | 128h |  |
| 294 | 8.2 | ЦКО дизайн | 14d? | 2026-10-05 | 2026-10-22 |  | 0d |  | start no earlier than 2026-10-05 | Калинкин | 112h |  |
| 295 | 8.3 | ЦКО аналитика | 16d? | 2026-10-23 | 2026-11-13 | 294 | 0d |  | finish no earlier than 2026-09-11 | Мерзликин | 128h |  |
| 296 | 8.4 | ЦКО back | 5d? | 2026-11-16 | 2026-11-20 | 295 | 11d | 0d | finish no earlier than 2026-09-18 | Успенский | 40h |  |
| 297 | 8.5 | ЦКО front | 15d? | 2026-11-16 | 2026-12-04 | 295 | 0d |  | finish no earlier than 2026-10-01 | Касенко | 120h |  |
| 298 | 8.6 | ЦКО тестирование back | 8d | 2026-11-23 | 2026-12-02 | 296 | 11d |  | finish no earlier than 2026-09-30 | Шлогауэр | 64h |  |
| 299 | 8.7 | ЦКО тестирование front | 7d? | 2026-12-07 | 2026-12-15 | 297 | 0d |  | finish no earlier than 2026-10-09 | Шлогауэр | 56h | в плане не было |

| ID | WBS | Task | Duration | Start | Finish | Total slack | Constraint | Resources | Work |
| --- | --- | --- | --- | --- | --- | --- | --- | --- | --- |
| 302 | 9 | **Другие проекты** | 10d? | 2026-08-17 | 2026-08-28 | 80d |  |  | 80h |
| 303 | 9.1 | Карточка фиксы_аналитика ЦКО | 5d? | 2026-08-17 | 2026-08-21 | 85d | finish no earlier than 2026-08-21 | Мерзликин | 40h |
| 304 | 9.2 | Флоу подключения расширителей для фиксы | 5d? | 2026-08-24 | 2026-08-28 | 80d | finish no earlier than 2026-08-28 | Мерзликин | 40h |
